# WBS_ServiFiestasAlfredos

Schedule from MS Project, 2017-05-06 to 2017-08-15, costs in $.
Toshiba

## Calendars

- Estándar: Mon-Fri 09:00-13:00, 15:00-19:00; Sat-Sun off.

## Resources

| Resource | Rate |
| --- | --- |
| GMJ_ANA | 160 |
| LSC_QA | 200 |
| EVG_AC | 115 |
| JAGG_ADMON | 217 |
| JAGG_PR | 112 |
| LSC_DE | 140 |
| JAMG_CTE |  |
| EMVG_TES | 110 |

## Schedule

| ID | WBS | Task | Type | Duration | Start | Finish | Predecessors | Total slack | Resources | Work | Cost |
| --- | --- | --- | --- | --- | --- | --- | --- | --- | --- | --- | --- |
| 1 | 1 | **Mejora de procesos** |  | 0.75d | 2017-05-22 09:00 | 2017-05-22 17:00 |  | 0d |  | 6h | 1,302 |
| 2 | 1.1 | **Recolección y refinamiento de requisitos** |  | 0.75d | 2017-05-22 09:00 | 2017-05-22 17:00 |  | 0d |  | 6h | 1,302 |
| 3 | 1.1.1 | **plan preliminar** |  | 0.75d | 2017-05-22 09:00 | 2017-05-22 17:00 |  | 0d |  | 6h | 1,302 |
| 4 | 1.1.1.1 | Generar un wbs del producto inical |  | 1h | 2017-05-22 09:00 | 2017-05-22 10:00 |  | 0d | JAGG_ADMON | 1h | 217 |
| 5 | 1.1.1.2 | Generar project charter |  | 2h | 2017-05-22 10:00 | 2017-05-22 12:00 | 4 | 0d | JAGG_ADMON | 2h | 434 |
| 6 | 1.1.1.3 | Plan preliminar del proyecto |  | 2h | 2017-05-22 12:00 | 2017-05-22 16:00 | 5 | 0d | JAGG_ADMON | 2h | 434 |
| 7 | 1.1.1.4 | Matriz de responsabilidades |  | 1h | 2017-05-22 16:00 | 2017-05-22 17:00 | 6 | 0d | JAGG_ADMON | 1h | 217 |
| 8 | 2 | **Servifiestas Alfredos** |  | 61.25d? | 2017-05-22 17:00 | 2017-08-15 19:00 |  | 0d |  | 505h | 58,871 |
| 9 | 2.1 | Formación del equipo |  | 1d | 2017-05-22 17:00 | 2017-05-23 17:00 | 7 | 0d | JAGG_ADMON | 8h | 1,736 |
| 10 | 2.2 | **Prototipo 1** |  | 40.25d? | 2017-05-23 17:00 | 2017-07-18 19:00 |  | 0d |  | 329h | 38,835 |
| 11 | 2.2.1 | **Análisis** |  | 8.62d | 2017-05-23 17:00 | 2017-06-05 12:00 |  | 0d |  | 71h | 8,623 |
| 12 | 2.2.1.1 | **Elicitación** |  | 4.62d | 2017-05-23 17:00 | 2017-05-30 12:00 |  | 0d |  | 39h | 4,329 |
| 13 | 2.2.1.1.1 | Generar lista de proveedores |  | 2h | 2017-05-23 17:00 | 2017-05-23 19:00 | 9 | 0d | GMJ_ANA | 2h | 222 |
| 14 | 2.2.1.1.2 | Evaluar proveedores de requerimientos |  | 2h | 2017-05-23 17:00 | 2017-05-23 19:00 | 13SS | 0d | GMJ_ANA | 2h | 222 |
| 15 | 2.2.1.1.3 | Definir estrategia de recoleccion de requerimientos |  | 1h | 2017-05-24 09:00 | 2017-05-24 10:00 | 14 | 0d | GMJ_ANA | 1h | 111 |
| 16 | 2.2.1.1.4 | Planificar reuniones de elicitación de requerimientos |  | 2h | 2017-05-24 10:00 | 2017-05-24 12:00 | 15 | 0d | GMJ_ANA | 2h | 222 |
| 17 | 2.2.1.1.5 | Identificar proceesos del sistema |  | 20h | 2017-05-24 12:00 | 2017-05-26 18:00 | 16 | 0d | GMJ_ANA | 20h | 2,220 |
| 18 | 2.2.1.1.6 | Identificar requerimientos funcionales |  | 8h | 2017-05-26 18:00 | 2017-05-29 18:00 | 17 | 0d | GMJ_ANA | 8h | 888 |
| 19 | 2.2.1.1.7 | Identificar requerimientos no funcionales |  | 4h | 2017-05-29 18:00 | 2017-05-30 12:00 | 18 | 0d | GMJ_ANA | 4h | 444 |
| 20 | 2.2.1.2 | **Especificación** |  | 2d | 2017-05-30 12:00 | 2017-06-01 12:00 |  | 0d |  | 16h | 1,776 |
| 21 | 2.2.1.2.1 | Describir requerimientos |  | 4h | 2017-05-30 12:00 | 2017-05-30 18:00 | 19 | 0d | GMJ_ANA | 4h | 444 |
| 22 | 2.2.1.2.2 | Evaluar requerimientos |  | 4h | 2017-05-30 18:00 | 2017-05-31 12:00 | 21 | 0d | GMJ_ANA | 4h | 444 |
| 23 | 2.2.1.2.3 | SRS |  | 8h | 2017-05-31 12:00 | 2017-06-01 12:00 | 22 | 0d | GMJ_ANA | 8h | 888 |
| 24 | 2.2.1.3 | **Gestión** |  | 2d | 2017-06-01 12:00 | 2017-06-05 12:00 | 20 | 0d |  | 16h | 2,518 |
| 25 | 2.2.1.3.1 | Priorizar los requerimientos |  | 6h | 2017-06-01 12:00 | 2017-06-02 10:00 | 23 | 0d | GMJ_ANA | 6h | 666 |
| 26 | 2.2.1.3.2 | almacenar los requerimientos en un repositorio |  | 1h | 2017-06-02 10:00 | 2017-06-02 11:00 | 25 | 0d | GMJ_ANA | 1h | 111 |
| 27 | 2.2.1.3.3 | Asignar al grupo de desarrollo los requerimientos |  | 4h | 2017-06-02 11:00 | 2017-06-02 17:00 | 26 | 0d | JAGG_ADMON | 4h | 868 |
| 28 | 2.2.1.3.4 | Administrar los cambios en los requerimientos |  | 2h | 2017-06-02 17:00 | 2017-06-02 19:00 | 27 | 0d | GMJ_ANA | 2h | 222 |
| 29 | 2.2.1.3.5 | Administrar la trazabilidad de los requerimientos |  | 3h | 2017-06-05 09:00 | 2017-06-05 12:00 | 28 | 0d | JAGG_ADMON | 3h | 651 |
| 30 | 2.2.1.3.6 | Hito Análisis | milestone | 0d | 2017-06-05 12:00 | 2017-06-05 12:00 | 29 | 0d | GMJ_ANA |  |  |

| ID | WBS | Task | Type | Duration | Start | Finish | Predecessors | Total slack | Resources | Work | Cost |
| --- | --- | --- | --- | --- | --- | --- | --- | --- | --- | --- | --- |
| 31 | 2.2.2 | **Planeación** |  | 7.5d? | 2017-06-05 12:00 | 2017-06-14 18:00 | 11 | 0d |  | 65h | 10,928 |
| 32 | 2.2.2.1 | Definir ciclo de vida |  | 2h | 2017-06-05 12:00 | 2017-06-05 16:00 | 29 | 0d | JAGG_ADMON | 2h | 434 |
| 33 | 2.2.2.2 | Definir políticas del proyecto |  | 4h | 2017-06-05 16:00 | 2017-06-06 10:00 | 32 | 0d | JAGG_ADMON | 4h | 868 |
| 34 | 2.2.2.3 | Matriz de comunicación |  | 1d? | 2017-06-06 10:00 | 2017-06-07 10:00 | 33 | 0d | JAGG_ADMON | 8h | 1,736 |
| 35 | 2.2.2.4 | Matriz de responsabilidades |  | 1d? | 2017-06-07 10:00 | 2017-06-08 10:00 | 34 | 0d | JAGG_ADMON | 8h | 1,736 |
| 36 | 2.2.2.5 | Actualizar plan de proyecto |  | 2h | 2017-06-08 10:00 | 2017-06-08 12:00 | 35 | 0d | JAGG_ADMON | 2h | 434 |
| 37 | 2.2.2.6 | **Estimación** |  | 0.88d | 2017-06-08 12:00 | 2017-06-09 11:00 | 36 | 0d |  | 7h | 1,519 |
| 38 | 2.2.2.6.1 | Actualizar WBS/Calendario |  | 2h | 2017-06-08 12:00 | 2017-06-08 16:00 | 36 | 0d | JAGG_ADMON | 2h | 434 |
| 39 | 2.2.2.6.2 | Diccionario del wbs |  | 4h | 2017-06-08 16:00 | 2017-06-09 10:00 | 38 | 0d | JAGG_ADMON | 4h | 868 |
| 40 | 2.2.2.6.3 | Costos |  | 1h | 2017-06-09 10:00 | 2017-06-09 11:00 | 39 | 0d | JAGG_ADMON | 1h | 217 |
| 41 | 2.2.2.7 | **Riesgos** |  | 2.75d | 2017-06-09 11:00 | 2017-06-13 19:00 | 37 | 0d |  | 22h | 2,442 |
| 42 | 2.2.2.7.1 | Identificación de riesgos |  | 4h | 2017-06-09 11:00 | 2017-06-09 17:00 | 40 | 0d | GMJ_ANA | 4h | 444 |
| 43 | 2.2.2.7.2 | Análisis cuantitativo de los riesgos |  | 4h | 2017-06-09 17:00 | 2017-06-12 11:00 | 42 | 0d | GMJ_ANA | 4h | 444 |
| 44 | 2.2.2.7.3 | Análisis cualitativo de los riesgos |  | 4h | 2017-06-12 11:00 | 2017-06-12 17:00 | 43 | 0d | GMJ_ANA | 4h | 444 |
| 45 | 2.2.2.7.4 | Asignacionde prioridades |  | 2h | 2017-06-12 17:00 | 2017-06-12 19:00 | 44 | 0d | GMJ_ANA | 2h | 222 |
| 46 | 2.2.2.7.5 | Plan de mitigación de riesgos |  | 2h | 2017-06-13 09:00 | 2017-06-13 11:00 | 45 | 0d | GMJ_ANA | 2h | 222 |
| 47 | 2.2.2.7.6 | Plan de contingencia |  | 6h | 2017-06-13 11:00 | 2017-06-13 19:00 | 46 | 0d | GMJ_ANA | 6h | 666 |
| 48 | 2.2.2.8 | **Aseguramiento de la calidad** |  | 0.88d | 2017-06-14 09:00 | 2017-06-14 18:00 | 41 | 0d |  | 12h | 1,759 |
| 49 | 2.2.2.8.1 | Plan de gestión de la configuración |  | 5h | 2017-06-14 09:00 | 2017-06-14 16:00 | 46 | 0d | LSC_QA; EVG_AC | 10h | 1,325 |
| 50 | 2.2.2.8.2 | Junta de arranque de proyecto |  | 2h | 2017-06-14 16:00 | 2017-06-14 18:00 | 49 | 0d | JAGG_ADMON | 2h | 434 |
| 51 | 2.2.2.9 | Hito planeación | milestone | 0d | 2017-06-14 18:00 | 2017-06-14 18:00 | 50 | 0d | JAGG_ADMON |  |  |
| 52 | 2.2.3 | **Diseño** |  | 13.75d | 2017-06-14 18:00 | 2017-07-04 16:00 | 31 | 0d |  | 110h | 11,000 |
| 53 | 2.2.3.1 | Definición de la arquitectura |  | 2d | 2017-06-14 18:00 | 2017-06-16 18:00 | 50 | 0d | LSC_DE | 16h | 1,600 |
| 54 | 2.2.3.2 | **Diagramas UML** |  | 7d | 2017-06-16 18:00 | 2017-06-27 18:00 |  | 0d |  | 56h | 5,600 |
| 55 | 2.2.3.2.1 | Diagrama de caso de uso |  | 2d | 2017-06-16 18:00 | 2017-06-20 18:00 | 53 | 0d | LSC_DE | 16h | 1,600 |
| 56 | 2.2.3.2.2 | Diagrama de secuencias |  | 1d | 2017-06-20 18:00 | 2017-06-21 18:00 | 55 | 0d | LSC_DE | 8h | 800 |
| 57 | 2.2.3.2.3 | Diagrama de clases |  | 1d | 2017-06-21 18:00 | 2017-06-22 18:00 | 56 | 0d | LSC_DE | 8h | 800 |
| 58 | 2.2.3.2.4 | Diagrama de actividades |  | 1d | 2017-06-22 18:00 | 2017-06-23 18:00 | 57 | 0d | LSC_DE | 8h | 800 |
| 59 | 2.2.3.2.5 | Diagrama de componentes |  | 1d | 2017-06-23 18:00 | 2017-06-26 18:00 | 58 | 0d | LSC_DE | 8h | 800 |
| 60 | 2.2.3.2.6 | Diagrama de despliege |  | 1d | 2017-06-26 18:00 | 2017-06-27 18:00 | 59 | 0d | LSC_DE | 8h | 800 |
| 61 | 2.2.3.3 | Mapa de navegación |  | 18h | 2017-06-27 18:00 | 2017-06-30 10:00 | 60 | 0d | LSC_DE | 18h | 1,800 |
| 62 | 2.2.3.4 | Bocetos o maquetación |  | 1d | 2017-06-30 10:00 | 2017-07-03 10:00 | 61 | 0d | LSC_DE | 8h | 800 |

| ID | WBS | Task | Type | Duration | Start | Finish | Predecessors | Total slack | Resources | Work | Cost |
| --- | --- | --- | --- | --- | --- | --- | --- | --- | --- | --- | --- |
| 63 | 2.2.3.5 | **Base de datos** |  | 1.5d | 2017-07-03 10:00 | 2017-07-04 16:00 |  | 0d |  | 12h | 1,200 |
| 64 | 2.2.3.5.1 | Diagrama E-R |  | 2h | 2017-07-03 10:00 | 2017-07-03 12:00 | 62 | 0d | LSC_DE | 2h | 200 |
| 65 | 2.2.3.5.2 | Diagrama Relacional |  | 10h | 2017-07-03 12:00 | 2017-07-04 16:00 | 64 | 0d | LSC_DE | 10h | 1,000 |
| 66 | 2.2.3.6 | Hito Diseño | milestone | 0h | 2017-07-04 16:00 | 2017-07-04 16:00 | 65 | 0d | LSC_DE |  |  |
| 67 | 2.2.4 | **Codificación** |  | 2.38d | 2017-07-04 16:00 | 2017-07-06 19:00 | 52 | 0d |  | 19h | 2,128 |
| 68 | 2.2.4.1 | **FrontEnd** |  | 2.38d | 2017-07-04 16:00 | 2017-07-06 19:00 | 66 | 0d |  | 19h | 2,128 |
| 69 | 2.2.4.1.1 | Index |  | 2h | 2017-07-04 16:00 | 2017-07-04 18:00 | 66 | 0d | JAGG_PR | 2h | 224 |
| 70 | 2.2.4.1.2 | Contacto |  | 2h | 2017-07-04 18:00 | 2017-07-05 10:00 | 69 | 0d | JAGG_PR | 2h | 224 |
| 71 | 2.2.4.1.3 | Filosofía |  | 2h | 2017-07-05 10:00 | 2017-07-05 12:00 | 70 | 0d | JAGG_PR | 2h | 224 |
| 72 | 2.2.4.1.4 | Productos (tienda) |  | 4h | 2017-07-05 12:00 | 2017-07-05 18:00 | 71 | 0d | JAGG_PR | 4h | 448 |
| 73 | 2.2.4.1.5 | Galeria |  | 2h | 2017-07-05 18:00 | 2017-07-06 10:00 | 72 | 0d | JAGG_PR | 2h | 224 |
| 74 | 2.2.4.1.6 | Acerca de |  | 2h | 2017-07-06 10:00 | 2017-07-06 12:00 | 73 | 0d | JAGG_PR | 2h | 224 |
| 75 | 2.2.4.1.7 | Servicios |  | 2h | 2017-07-06 12:00 | 2017-07-06 16:00 | 74 | 0d | JAGG_PR | 2h | 224 |
| 76 | 2.2.4.1.8 | View Log-In |  | 3h | 2017-07-06 16:00 | 2017-07-06 19:00 | 75 | 0d | JAGG_PR | 3h | 336 |
| 77 | 2.2.4.2 | Hito codificación | milestone | 0h | 2017-07-06 19:00 | 2017-07-06 19:00 | 76 | 0d | JAGG_PR |  |  |
| 78 | 2.2.5 | **Pruebas** |  | 5.75d | 2017-07-07 09:00 | 2017-07-14 17:00 | 67 | 0d |  | 46h | 4,140 |
| 79 | 2.2.5.1 | **Caja blanca** |  | 5.75d | 2017-07-07 09:00 | 2017-07-14 17:00 |  | 0d |  | 46h | 4,140 |
| 80 | 2.2.5.1.1 | **Index** |  | 0.75d | 2017-07-07 09:00 | 2017-07-07 17:00 | 77 | 0d |  | 6h | 540 |
| 81 | 2.2.5.1.1.1 | Pruebas unitarias |  | 3h | 2017-07-07 09:00 | 2017-07-07 12:00 | 77 | 0d | EMVG_TES | 3h | 270 |
| 82 | 2.2.5.1.1.2 | pruebas de módulo |  | 3h | 2017-07-07 12:00 | 2017-07-07 17:00 | 81 | 0d | EMVG_TES | 3h | 270 |
| 83 | 2.2.5.1.2 | **Contacto** |  | 0.75d | 2017-07-07 17:00 | 2017-07-10 13:00 | 80 | 0d |  | 6h | 540 |
| 84 | 2.2.5.1.2.1 | pruebas unitarias |  | 3h | 2017-07-07 17:00 | 2017-07-10 10:00 | 82 | 0d | EMVG_TES | 3h | 270 |
| 85 | 2.2.5.1.2.2 | pruebas de módulo |  | 3h | 2017-07-10 10:00 | 2017-07-10 13:00 | 84 | 0d | EMVG_TES | 3h | 270 |
| 86 | 2.2.5.1.3 | **Filosofía** |  | 0.75d | 2017-07-10 15:00 | 2017-07-11 11:00 | 83 | 0d |  | 6h | 540 |
| 87 | 2.2.5.1.3.1 | pruebas unitarias |  | 3h | 2017-07-10 15:00 | 2017-07-10 18:00 | 85 | 0d | EMVG_TES | 3h | 270 |
| 88 | 2.2.5.1.3.2 | pruebas de módulo |  | 3h | 2017-07-10 18:00 | 2017-07-11 11:00 | 87 | 0d | EMVG_TES | 3h | 270 |

| ID | WBS | Task | Type | Duration | Start | Finish | Predecessors | Total slack | Resources | Work | Cost |
| --- | --- | --- | --- | --- | --- | --- | --- | --- | --- | --- | --- |
| 89 | 2.2.5.1.4 | **Acerca de** |  | 0.75d | 2017-07-11 11:00 | 2017-07-11 19:00 | 86 | 0d |  | 6h | 540 |
| 90 | 2.2.5.1.4.1 | Pruebas unitarias |  | 3h | 2017-07-11 11:00 | 2017-07-11 16:00 | 88 | 0d | EMVG_TES | 3h | 270 |
| 91 | 2.2.5.1.4.2 | Pruebas de módulo |  | 3h | 2017-07-11 16:00 | 2017-07-11 19:00 | 90 | 0d | EMVG_TES | 3h | 270 |
| 92 | 2.2.5.1.5 | **Servicios** |  | 0.75d | 2017-07-12 09:00 | 2017-07-12 17:00 | 89 | 0d |  | 6h | 540 |
| 93 | 2.2.5.1.5.1 | Pruebas unitarias |  | 3h | 2017-07-12 09:00 | 2017-07-12 12:00 | 91 | 0d | EMVG_TES | 3h | 270 |
| 94 | 2.2.5.1.5.2 | Pruebas de módulo |  | 3h | 2017-07-12 12:00 | 2017-07-12 17:00 | 93 | 0d | EMVG_TES | 3h | 270 |
| 95 | 2.2.5.1.6 | **Galería** |  | 0.75d | 2017-07-12 17:00 | 2017-07-13 13:00 | 92 | 0d |  | 6h | 540 |
| 96 | 2.2.5.1.6.1 | Pruebas Unitarias |  | 3h | 2017-07-12 17:00 | 2017-07-13 10:00 | 94 | 0d | EMVG_TES | 3h | 270 |
| 97 | 2.2.5.1.6.2 | Pruebas de módulo |  | 3h | 2017-07-13 10:00 | 2017-07-13 13:00 | 96 | 0d | EMVG_TES | 3h | 270 |
| 98 | 2.2.5.1.7 | **Productos** |  | 0.75d | 2017-07-13 15:00 | 2017-07-14 11:00 | 95 | 0d |  | 6h | 540 |
| 99 | 2.2.5.1.7.1 | Pruebas unitarias |  | 3h | 2017-07-13 15:00 | 2017-07-13 18:00 | 97 | 0d | EMVG_TES | 3h | 270 |
| 100 | 2.2.5.1.7.2 | Pruebas de módulo |  | 3h | 2017-07-13 18:00 | 2017-07-14 11:00 | 99 | 0d | EMVG_TES | 3h | 270 |
| 101 | 2.2.5.1.8 | pruebas de sistema |  | 2h | 2017-07-14 11:00 | 2017-07-14 13:00 | 100 | 0d | EMVG_TES | 2h | 180 |
| 102 | 2.2.5.1.9 | Pruebas de integración |  | 2h | 2017-07-14 15:00 | 2017-07-14 17:00 | 101 | 0d | EMVG_TES | 2h | 180 |
| 103 | 2.2.5.2 | Hito de pruebas | milestone | 0d | 2017-07-14 17:00 | 2017-07-14 17:00 | 102 | 0d | EMVG_TES |  |  |
| 104 | 2.2.6 | **Implementación** |  | 2.25d | 2017-07-14 17:00 | 2017-07-18 19:00 | 78 | 0d |  | 18h | 2,016 |
| 105 | 2.2.6.1 | Seleccionar un servidor web |  | 4h | 2017-07-14 17:00 | 2017-07-17 11:00 | 103 | 0d | JAGG_PR | 4h | 448 |
| 106 | 2.2.6.2 | Montar sitio web |  | 2h | 2017-07-17 11:00 | 2017-07-17 13:00 | 105 | 0d | JAGG_PR | 2h | 224 |
| 107 | 2.2.6.3 | Pruebas de integración |  | 2h | 2017-07-17 15:00 | 2017-07-17 17:00 | 106 | 0d | JAGG_PR | 2h | 224 |
| 108 | 2.2.6.4 | Manuales de usuario |  | 8h | 2017-07-17 17:00 | 2017-07-18 17:00 | 107 | 0d | JAGG_PR | 8h | 896 |
| 109 | 2.2.6.5 | Manuales de sistema |  | 2h | 2017-07-18 17:00 | 2017-07-18 19:00 | 108 | 0d | JAGG_PR | 2h | 224 |
| 110 | 2.2.6.6 | Hito implementación | milestone | 0h | 2017-07-18 19:00 | 2017-07-18 19:00 | 109 | 0d | JAGG_PR |  |  |
| 111 | 2.3 | **Prototipo 2** |  | 20d | 2017-07-19 09:00 | 2017-08-15 19:00 | 104 | 0d |  | 168h | 18,300 |
| 112 | 2.3.1 | **Diseño** |  | 10d | 2017-07-19 09:00 | 2017-08-01 19:00 |  | 0d |  | 80h | 8,000 |
| 113 | 2.3.1.1 | Definición de la arquitectura |  | 1d | 2017-07-19 09:00 | 2017-07-19 19:00 | 110 | 0d | LSC_DE | 8h | 800 |

| ID | WBS | Task | Type | Duration | Start | Finish | Predecessors | Total slack | Resources | Work | Cost |
| --- | --- | --- | --- | --- | --- | --- | --- | --- | --- | --- | --- |
| 114 | 2.3.1.2 | **Diagramas UML** |  | 3d | 2017-07-20 09:00 | 2017-07-24 19:00 | 113 | 0d |  | 24h | 2,400 |
| 115 | 2.3.1.2.1 | Diagrama de caso de uso |  | 4h | 2017-07-20 09:00 | 2017-07-20 13:00 | 113 | 0d | LSC_DE | 4h | 400 |
| 116 | 2.3.1.2.2 | Diagrama de secuencias |  | 4h | 2017-07-20 15:00 | 2017-07-20 19:00 | 115 | 0d | LSC_DE | 4h | 400 |
| 117 | 2.3.1.2.3 | Diagrama de clases |  | 4h | 2017-07-21 09:00 | 2017-07-21 13:00 | 116 | 0d | LSC_DE | 4h | 400 |
| 118 | 2.3.1.2.4 | Diagrama de actividades |  | 4h | 2017-07-21 15:00 | 2017-07-21 19:00 | 117 | 0d | LSC_DE | 4h | 400 |
| 119 | 2.3.1.2.5 | Diagrama de componentes |  | 4h | 2017-07-24 09:00 | 2017-07-24 13:00 | 118 | 0d | LSC_DE | 4h | 400 |
| 120 | 2.3.1.2.6 | Diagrama de despliege |  | 4h | 2017-07-24 15:00 | 2017-07-24 19:00 | 119 | 0d | LSC_DE | 4h | 400 |
| 121 | 2.3.1.3 | Mapa de navegación |  | 1d | 2017-07-25 09:00 | 2017-07-25 19:00 | 120 | 0d | LSC_DE | 8h | 800 |
| 122 | 2.3.1.4 | Bocetos o maquetación |  | 3d | 2017-07-26 09:00 | 2017-07-28 19:00 | 121 | 0d | LSC_DE | 24h | 2,400 |
| 123 | 2.3.1.5 | **Base de datos** |  | 2d | 2017-07-31 09:00 | 2017-08-01 19:00 | 114 | 0d |  | 16h | 1,600 |
| 124 | 2.3.1.5.1 | Diagrama E-R |  | 1d | 2017-07-31 09:00 | 2017-07-31 19:00 | 122 | 0d | LSC_DE | 8h | 800 |
| 125 | 2.3.1.5.2 | Diagrama Relacional |  | 1d | 2017-08-01 09:00 | 2017-08-01 19:00 | 124 | 0d | LSC_DE | 8h | 800 |
| 126 | 2.3.1.6 | Hito codificación | milestone | 0h | 2017-08-01 19:00 | 2017-08-01 19:00 | 125 | 0d |  |  |  |
| 127 | 2.3.2 | **Codificación** |  | 7.88d | 2017-08-02 09:00 | 2017-08-11 18:00 | 112 | 0d |  | 62h | 6,944 |
| 128 | 2.3.2.1 | **Backend** |  | 7.88d | 2017-08-02 09:00 | 2017-08-11 18:00 | 126 | 0d |  | 62h | 6,944 |
| 129 | 2.3.2.1.1 | **Módulo clientes** |  | 1.12d | 2017-08-02 09:00 | 2017-08-03 10:00 |  | 0d |  | 9h | 1,008 |
| 130 | 2.3.2.1.1.1 | **Interfaz** |  | 0.5d | 2017-08-02 09:00 | 2017-08-02 13:00 |  | 0d |  | 4h | 448 |
| 131 | 2.3.2.1.1.1.1 | Nuevo |  | 2h | 2017-08-02 09:00 | 2017-08-02 11:00 | 126 | 0d | JAGG_PR | 2h | 224 |
| 132 | 2.3.2.1.1.1.2 | Lectura |  | 2h | 2017-08-02 11:00 | 2017-08-02 13:00 | 131 | 0d | JAGG_PR | 2h | 224 |
| 133 | 2.3.2.1.1.2 | **Clases de cliente** |  | 0.62d | 2017-08-02 15:00 | 2017-08-03 10:00 |  | 0d |  | 5h | 560 |
| 134 | 2.3.2.1.1.2.1 | Login |  | 1h | 2017-08-02 15:00 | 2017-08-02 16:00 | 132 | 0d | JAGG_PR | 1h | 112 |
| 135 | 2.3.2.1.1.2.2 | Alta |  | 1h | 2017-08-02 16:00 | 2017-08-02 17:00 | 134 | 0d | JAGG_PR | 1h | 112 |
| 136 | 2.3.2.1.1.2.3 | Baja |  | 1h | 2017-08-02 17:00 | 2017-08-02 18:00 | 135 | 0d | JAGG_PR | 1h | 112 |
| 137 | 2.3.2.1.1.2.4 | Modificar |  | 1h | 2017-08-02 18:00 | 2017-08-02 19:00 | 136 | 0d | JAGG_PR | 1h | 112 |
| 138 | 2.3.2.1.1.2.5 | Lectura |  | 1h | 2017-08-03 09:00 | 2017-08-03 10:00 | 137 | 0d | JAGG_PR | 1h | 112 |

| ID | WBS | Task | Type | Duration | Start | Finish | Predecessors | Total slack | Resources | Work | Cost |
| --- | --- | --- | --- | --- | --- | --- | --- | --- | --- | --- | --- |
| 139 | 2.3.2.1.2 | **Módulo empleado/admin** |  | 1d | 2017-08-03 10:00 | 2017-08-04 10:00 | 129 | 0d |  | 8h | 896 |
| 140 | 2.3.2.1.2.1 | **Interfaz** |  | 0.25d | 2017-08-03 10:00 | 2017-08-03 12:00 |  | 0d |  | 2h | 224 |
| 141 | 2.3.2.1.2.1.1 | Nuevo |  | 1h | 2017-08-03 10:00 | 2017-08-03 11:00 | 138 | 0d | JAGG_PR | 1h | 112 |
| 142 | 2.3.2.1.2.1.2 | Lectura |  | 1h | 2017-08-03 11:00 | 2017-08-03 12:00 | 141 | 0d | JAGG_PR | 1h | 112 |
| 143 | 2.3.2.1.2.2 | **Clases de empleado/admin** |  | 0.75d | 2017-08-03 12:00 | 2017-08-04 10:00 |  | 0d |  | 6h | 672 |
| 144 | 2.3.2.1.2.2.1 | Login |  | 1h | 2017-08-03 12:00 | 2017-08-03 13:00 | 142 | 0d | JAGG_PR | 1h | 112 |
| 145 | 2.3.2.1.2.2.2 | Alta |  | 1h | 2017-08-03 15:00 | 2017-08-03 16:00 | 144 | 0d | JAGG_PR | 1h | 112 |
| 146 | 2.3.2.1.2.2.3 | Baja |  | 1h | 2017-08-03 16:00 | 2017-08-03 17:00 | 145 | 0d | JAGG_PR | 1h | 112 |
| 147 | 2.3.2.1.2.2.4 | Modificar |  | 2h | 2017-08-03 17:00 | 2017-08-03 19:00 | 146 | 0d | JAGG_PR | 2h | 224 |
| 148 | 2.3.2.1.2.2.5 | Lectura |  | 1h | 2017-08-04 09:00 | 2017-08-04 10:00 | 147 | 0d | JAGG_PR | 1h | 112 |
| 149 | 2.3.2.1.3 | **Módulo factura** |  | 0.75d | 2017-08-04 10:00 | 2017-08-04 18:00 | 139 | 0d |  | 6h | 672 |
| 150 | 2.3.2.1.3.1 | **Interfaz** |  | 0.25d | 2017-08-04 10:00 | 2017-08-04 12:00 |  | 0d |  | 2h | 224 |
| 151 | 2.3.2.1.3.1.1 | Nuevo |  | 1h | 2017-08-04 10:00 | 2017-08-04 11:00 | 148 | 0d | JAGG_PR | 1h | 112 |
| 152 | 2.3.2.1.3.1.2 | Lectura |  | 1h | 2017-08-04 11:00 | 2017-08-04 12:00 | 151 | 0d | JAGG_PR | 1h | 112 |
| 153 | 2.3.2.1.3.2 | **Clases de factura** |  | 0.5d | 2017-08-04 12:00 | 2017-08-04 18:00 |  | 0d |  | 4h | 448 |
| 154 | 2.3.2.1.3.2.1 | Alta |  | 1h | 2017-08-04 12:00 | 2017-08-04 13:00 | 152 | 0d | JAGG_PR | 1h | 112 |
| 155 | 2.3.2.1.3.2.2 | Baja |  | 1h | 2017-08-04 15:00 | 2017-08-04 16:00 | 154 | 0d | JAGG_PR | 1h | 112 |
| 156 | 2.3.2.1.3.2.3 | Modificar |  | 1h | 2017-08-04 16:00 | 2017-08-04 17:00 | 155 | 0d | JAGG_PR | 1h | 112 |
| 157 | 2.3.2.1.3.2.4 | Lectura |  | 1h | 2017-08-04 17:00 | 2017-08-04 18:00 | 156 | 0d | JAGG_PR | 1h | 112 |
| 158 | 2.3.2.1.4 | Hito módulos | milestone | 0h | 2017-08-04 18:00 | 2017-08-04 18:00 | 157 | 0d |  |  |  |
| 159 | 2.3.2.1.5 | **Módulo producto** |  | 0.75d | 2017-08-04 18:00 | 2017-08-07 16:00 |  | 0d |  | 6h | 672 |
| 160 | 2.3.2.1.5.1 | **Interfaz** |  | 0.25d | 2017-08-04 18:00 | 2017-08-07 10:00 |  | 0d |  | 2h | 224 |
| 161 | 2.3.2.1.5.1.1 | Nuevo |  | 1h | 2017-08-04 18:00 | 2017-08-04 19:00 | 158 | 0d | JAGG_PR | 1h | 112 |
| 162 | 2.3.2.1.5.1.2 | Lectura |  | 1h | 2017-08-07 09:00 | 2017-08-07 10:00 | 161 | 0d | JAGG_PR | 1h | 112 |

| ID | WBS | Task | Type | Duration | Start | Finish | Predecessors | Total slack | Resources | Work | Cost |
| --- | --- | --- | --- | --- | --- | --- | --- | --- | --- | --- | --- |
| 163 | 2.3.2.1.5.2 | **Clases de producto** |  | 0.5d | 2017-08-07 10:00 | 2017-08-07 16:00 |  | 0d |  | 4h | 448 |
| 164 | 2.3.2.1.5.2.1 | Alta |  | 1h | 2017-08-07 10:00 | 2017-08-07 11:00 | 162 | 0d | JAGG_PR | 1h | 112 |
| 165 | 2.3.2.1.5.2.2 | Baja |  | 1h | 2017-08-07 11:00 | 2017-08-07 12:00 | 164 | 0d | JAGG_PR | 1h | 112 |
| 166 | 2.3.2.1.5.2.3 | Modificar |  | 1h | 2017-08-07 12:00 | 2017-08-07 13:00 | 165 | 0d | JAGG_PR | 1h | 112 |
| 167 | 2.3.2.1.5.2.4 | Lectura |  | 1h | 2017-08-07 15:00 | 2017-08-07 16:00 | 166 | 0d | JAGG_PR | 1h | 112 |
| 168 | 2.3.2.1.6 | **Módulo modelo** |  | 0.75d | 2017-08-07 16:00 | 2017-08-08 12:00 |  | 0d |  | 6h | 672 |
| 169 | 2.3.2.1.6.1 | **Interfaz** |  | 0.25d | 2017-08-07 16:00 | 2017-08-07 18:00 |  | 0d |  | 2h | 224 |
| 170 | 2.3.2.1.6.1.1 | Nuevo |  | 1h | 2017-08-07 16:00 | 2017-08-07 17:00 | 167 | 0d | JAGG_PR | 1h | 112 |
| 171 | 2.3.2.1.6.1.2 | Lectura |  | 1h | 2017-08-07 17:00 | 2017-08-07 18:00 | 170 | 0d | JAGG_PR | 1h | 112 |
| 172 | 2.3.2.1.6.2 | **Clases de modelo** |  | 0.5d | 2017-08-07 18:00 | 2017-08-08 12:00 |  | 0d |  | 4h | 448 |
| 173 | 2.3.2.1.6.2.1 | Alta |  | 1h | 2017-08-07 18:00 | 2017-08-07 19:00 | 171 | 0d | JAGG_PR | 1h | 112 |
| 174 | 2.3.2.1.6.2.2 | Baja |  | 1h | 2017-08-08 09:00 | 2017-08-08 10:00 | 173 | 0d | JAGG_PR | 1h | 112 |
| 175 | 2.3.2.1.6.2.3 | Modificar |  | 1h | 2017-08-08 10:00 | 2017-08-08 11:00 | 174 | 0d | JAGG_PR | 1h | 112 |
| 176 | 2.3.2.1.6.2.4 | Lectura |  | 1h | 2017-08-08 11:00 | 2017-08-08 12:00 | 175 | 0d | JAGG_PR | 1h | 112 |
| 177 | 2.3.2.1.7 | **Módulo pedido (Tienda)** |  | 1.88d | 2017-08-08 12:00 | 2017-08-10 11:00 |  | 0d |  | 15h | 1,680 |
| 178 | 2.3.2.1.7.1 | **Interfaz** |  | 1.12d | 2017-08-08 12:00 | 2017-08-09 13:00 |  | 0d |  | 9h | 1,008 |
| 179 | 2.3.2.1.7.1.1 | Nuevo |  | 6h | 2017-08-08 12:00 | 2017-08-09 10:00 | 176 | 0d | JAGG_PR | 6h | 672 |
| 180 | 2.3.2.1.7.1.2 | Lectura |  | 3h | 2017-08-09 10:00 | 2017-08-09 13:00 | 179 | 0d | JAGG_PR | 3h | 336 |
| 181 | 2.3.2.1.7.2 | **Clases de pedido** |  | 0.75d | 2017-08-09 15:00 | 2017-08-10 11:00 |  | 0d |  | 6h | 672 |
| 182 | 2.3.2.1.7.2.1 | Alta |  | 2h | 2017-08-09 15:00 | 2017-08-09 17:00 | 180 | 0d | JAGG_PR | 2h | 224 |
| 183 | 2.3.2.1.7.2.2 | Baja |  | 1h | 2017-08-09 17:00 | 2017-08-09 18:00 | 182 | 0d | JAGG_PR | 1h | 112 |
| 184 | 2.3.2.1.7.2.3 | Modificar |  | 2h | 2017-08-09 18:00 | 2017-08-10 10:00 | 183 | 0d | JAGG_PR | 2h | 224 |
| 185 | 2.3.2.1.7.2.4 | Lectura |  | 1h | 2017-08-10 10:00 | 2017-08-10 11:00 | 184 | 0d | JAGG_PR | 1h | 112 |
| 186 | 2.3.2.1.8 | Hito Módulos | milestone | 0h | 2017-08-10 11:00 | 2017-08-10 11:00 | 185 | 0d |  |  |  |

| ID | WBS | Task | Duration | Start | Finish | Predecessors | Total slack | Resources | Work | Cost |
| --- | --- | --- | --- | --- | --- | --- | --- | --- | --- | --- |
| 187 | 2.3.2.1.9 | **Módulo buffet** | 0.75d | 2017-08-10 11:00 | 2017-08-10 19:00 |  | 0d |  | 6h | 672 |
| 188 | 2.3.2.1.9.1 | **Interfaz** | 0.25d | 2017-08-10 11:00 | 2017-08-10 13:00 |  | 0d |  | 2h | 224 |
| 189 | 2.3.2.1.9.1.1 | Nuevo | 1h | 2017-08-10 11:00 | 2017-08-10 12:00 | 186 | 0d | JAGG_PR | 1h | 112 |
| 190 | 2.3.2.1.9.1.2 | Lectura | 1h | 2017-08-10 12:00 | 2017-08-10 13:00 | 189 | 0d | JAGG_PR | 1h | 112 |
| 191 | 2.3.2.1.9.2 | **Clases de buffet** | 0.5d | 2017-08-10 15:00 | 2017-08-10 19:00 |  | 0d |  | 4h | 448 |
| 192 | 2.3.2.1.9.2.1 | Alta | 1h | 2017-08-10 15:00 | 2017-08-10 16:00 | 190 | 0d | JAGG_PR | 1h | 112 |
| 193 | 2.3.2.1.9.2.2 | Baja | 1h | 2017-08-10 16:00 | 2017-08-10 17:00 | 192 | 0d | JAGG_PR | 1h | 112 |
| 194 | 2.3.2.1.9.2.3 | Modificar | 1h | 2017-08-10 17:00 | 2017-08-10 18:00 | 193 | 0d | JAGG_PR | 1h | 112 |
| 195 | 2.3.2.1.9.2.4 | Lectura | 1h | 2017-08-10 18:00 | 2017-08-10 19:00 | 194 | 0d | JAGG_PR | 1h | 112 |
| 196 | 2.3.2.1.10 | **Módulo platillo** | 0.75d | 2017-08-11 09:00 | 2017-08-11 17:00 |  | 0d |  | 6h | 672 |
| 197 | 2.3.2.1.10.1 | **Interfaz** | 0.25d | 2017-08-11 09:00 | 2017-08-11 11:00 |  | 0d |  | 2h | 224 |
| 198 | 2.3.2.1.10.1.1 | Nuevo | 1h | 2017-08-11 09:00 | 2017-08-11 10:00 | 195 | 0d | JAGG_PR | 1h | 112 |
| 199 | 2.3.2.1.10.1.2 | Lectura | 1h | 2017-08-11 10:00 | 2017-08-11 11:00 | 198 | 0d | JAGG_PR | 1h | 112 |
| 200 | 2.3.2.1.10.2 | **Clases de platillo** | 0.5d | 2017-08-11 11:00 | 2017-08-11 17:00 |  | 0d |  | 4h | 448 |
| 201 | 2.3.2.1.10.2.1 | Alta | 1h | 2017-08-11 11:00 | 2017-08-11 12:00 | 199 | 0d | JAGG_PR | 1h | 112 |
| 202 | 2.3.2.1.10.2.2 | Baja | 1h | 2017-08-11 12:00 | 2017-08-11 13:00 | 201 | 0d | JAGG_PR | 1h | 112 |
| 203 | 2.3.2.1.10.2.3 | Modificar | 1h | 2017-08-11 15:00 | 2017-08-11 16:00 | 202 | 0d | JAGG_PR | 1h | 112 |
| 204 | 2.3.2.1.10.2.4 | Lectura | 1h | 2017-08-11 16:00 | 2017-08-11 17:00 | 203 | 0d | JAGG_PR | 1h | 112 |
| 205 | 2.3.2.1.11 | Hito módulos | 1h | 2017-08-11 17:00 | 2017-08-11 18:00 | 204 | 0d |  |  |  |
| 206 | 2.3.3 | **Pruebas** | 1.12d | 2017-08-11 18:00 | 2017-08-14 19:00 | 127 | 0d |  | 18h | 1,620 |
| 207 | 2.3.3.1 | **Caja blanca** | 1.12d | 2017-08-11 18:00 | 2017-08-14 19:00 |  | 0d |  | 18h | 1,620 |
| 208 | 2.3.3.1.1 | **Módulo clientes** | 0.12d | 2017-08-11 18:00 | 2017-08-11 19:00 |  | 0d |  | 2h | 180 |
| 209 | 2.3.3.1.1.1 | Pruebas unitarias | 1h | 2017-08-11 18:00 | 2017-08-11 19:00 | 205 | 0d | EMVG_TES | 1h | 90 |
| 210 | 2.3.3.1.1.2 | pruebas de módulo | 1h | 2017-08-11 18:00 | 2017-08-11 19:00 | 209SS | 0d | EMVG_TES | 1h | 90 |

| ID | WBS | Task | Type | Duration | Start | Finish | Predecessors | Total slack | Resources | Work | Cost |
| --- | --- | --- | --- | --- | --- | --- | --- | --- | --- | --- | --- |
| 211 | 2.3.3.1.2 | **Módulo empleado/admin** |  | 0.12d | 2017-08-14 09:00 | 2017-08-14 10:00 | 208 | 0d |  | 2h | 180 |
| 212 | 2.3.3.1.2.1 | pruebas unitarias |  | 1h | 2017-08-14 09:00 | 2017-08-14 10:00 | 210 | 0d | EMVG_TES | 1h | 90 |
| 213 | 2.3.3.1.2.2 | pruebas de módulo |  | 1h | 2017-08-14 09:00 | 2017-08-14 10:00 | 212SS | 0d | EMVG_TES | 1h | 90 |
| 214 | 2.3.3.1.3 | **Módulo factura** |  | 0.12d | 2017-08-14 10:00 | 2017-08-14 11:00 | 211SS | 0d |  | 2h | 180 |
| 215 | 2.3.3.1.3.1 | pruebas unitarias |  | 1h | 2017-08-14 10:00 | 2017-08-14 11:00 | 213 | 0d | EMVG_TES | 1h | 90 |
| 216 | 2.3.3.1.3.2 | pruebas de módulo |  | 1h | 2017-08-14 10:00 | 2017-08-14 11:00 | 215SS | 0d | EMVG_TES | 1h | 90 |
| 217 | 2.3.3.1.4 | **Módulo productos** |  | 0.12d | 2017-08-14 11:00 | 2017-08-14 12:00 | 214 | 0d |  | 2h | 180 |
| 218 | 2.3.3.1.4.1 | Pruebas unitarias |  | 1h | 2017-08-14 11:00 | 2017-08-14 12:00 | 216 | 0d | EMVG_TES | 1h | 90 |
| 219 | 2.3.3.1.4.2 | Pruebas de módulo |  | 1h | 2017-08-14 11:00 | 2017-08-14 12:00 | 218SS | 0d | EMVG_TES | 1h | 90 |
| 220 | 2.3.3.1.5 | **Módulo modelo** |  | 0.12d | 2017-08-14 12:00 | 2017-08-14 13:00 | 217 | 0d |  | 2h | 180 |
| 221 | 2.3.3.1.5.1 | Pruebas unitarias |  | 1h | 2017-08-14 12:00 | 2017-08-14 13:00 | 219 | 0d | EMVG_TES | 1h | 90 |
| 222 | 2.3.3.1.5.2 | Pruebas de módulo |  | 1h | 2017-08-14 12:00 | 2017-08-14 13:00 | 221SS | 0d | EMVG_TES | 1h | 90 |
| 223 | 2.3.3.1.6 | **Módulo pedidos** |  | 0.12d | 2017-08-14 15:00 | 2017-08-14 16:00 | 220 | 0d |  | 2h | 180 |
| 224 | 2.3.3.1.6.1 | Pruebas Unitarias |  | 1h | 2017-08-14 15:00 | 2017-08-14 16:00 | 222 | 0d | EMVG_TES | 1h | 90 |
| 225 | 2.3.3.1.6.2 | Pruebas de módulo |  | 1h | 2017-08-14 15:00 | 2017-08-14 16:00 | 224SS | 0d | EMVG_TES | 1h | 90 |
| 226 | 2.3.3.1.7 | **Módulo buffet** |  | 0.12d | 2017-08-14 16:00 | 2017-08-14 17:00 | 223 | 0d |  | 2h | 180 |
| 227 | 2.3.3.1.7.1 | Pruebas unitarias |  | 1h | 2017-08-14 16:00 | 2017-08-14 17:00 | 225 | 0d | EMVG_TES | 1h | 90 |
| 228 | 2.3.3.1.7.2 | Pruebas de módulo |  | 1h | 2017-08-14 16:00 | 2017-08-14 17:00 | 227SS | 0d | EMVG_TES | 1h | 90 |
| 229 | 2.3.3.1.8 | **Módulo platillos** |  | 0.12d | 2017-08-14 17:00 | 2017-08-14 18:00 | 226 | 0d |  | 2h | 180 |
| 230 | 2.3.3.1.8.1 | Pruebas unitarias |  | 1h | 2017-08-14 17:00 | 2017-08-14 18:00 | 228 | 0d | EMVG_TES | 1h | 90 |
| 231 | 2.3.3.1.8.2 | Pruebas de módulo |  | 1h | 2017-08-14 17:00 | 2017-08-14 18:00 | 230SS | 0d | EMVG_TES | 1h | 90 |
| 232 | 2.3.3.1.9 | pruebas de sistema |  | 1h | 2017-08-14 18:00 | 2017-08-14 19:00 | 231 | 0d | EMVG_TES | 1h | 90 |
| 233 | 2.3.3.1.10 | Pruebas de integración |  | 1h | 2017-08-14 18:00 | 2017-08-14 19:00 | 232SS | 0d | EMVG_TES | 1h | 90 |
| 234 | 2.3.3.2 | Hito de pruebas | milestone | 0h | 2017-08-14 19:00 | 2017-08-14 19:00 | 233 | 0d | EMVG_TES |  |  |

| ID | WBS | Task | Type | Duration | Start | Finish | Predecessors | Total slack | Constraint | Resources | Work | Cost |
| --- | --- | --- | --- | --- | --- | --- | --- | --- | --- | --- | --- | --- |
| 235 | 2.3.4 | **Cierre de proyecto** |  | 1d | 2017-08-15 09:00 | 2017-08-15 19:00 | 206 | 0d |  |  | 8h | 1,736 |
| 236 | 2.3.4.1 | Carta de aceptación |  | 1h | 2017-08-15 09:00 | 2017-08-15 10:00 | 234 | 0d |  | JAGG_ADMON | 1h | 217 |
| 237 | 2.3.4.2 | Acta del cierre del proyecto |  | 2h | 2017-08-15 10:00 | 2017-08-15 12:00 | 236 | 0d |  | JAGG_ADMON | 2h | 434 |
| 238 | 2.3.4.3 | Evaluación de desempeño |  | 1h | 2017-08-15 12:00 | 2017-08-15 13:00 | 237 | 0d |  | JAGG_ADMON | 1h | 217 |
| 239 | 2.3.4.4 | Juntar lecciones aprendidas |  | 1h | 2017-08-15 15:00 | 2017-08-15 16:00 | 238 | 0d |  | JAGG_ADMON | 1h | 217 |
| 240 | 2.3.4.5 | Revisión de aderencias |  | 1h | 2017-08-15 16:00 | 2017-08-15 17:00 | 239 | 0d |  | JAGG_ADMON | 1h | 217 |
| 241 | 2.3.4.6 | Liberación de recursos |  | 1h | 2017-08-15 17:00 | 2017-08-15 18:00 | 240 | 0d |  | JAGG_ADMON | 1h | 217 |
| 242 | 2.3.4.7 | Informe final de cierre |  | 1h | 2017-08-15 18:00 | 2017-08-15 19:00 | 241 | 0d |  | JAGG_ADMON | 1h | 217 |
| 243 | 2.3.4.8 | Hito cierre | milestone | 0h | 2017-08-15 19:00 | 2017-08-15 19:00 | 242 | 0d |  | JAGG_ADMON |  |  |
| 246 | 3 | **Revisión** |  | 40d | 2017-05-06 09:00 | 2017-07-01 09:00 |  | 32d |  |  |  |  |
| 247 | 3.1 | Revisión 1 | milestone | 0d | 2017-05-06 09:00 | 2017-05-06 09:00 |  | 72d | start no earlier than 2017-05-06 09:00 |  |  |  |
| 248 | 3.2 | Revisión 2 | milestone | 0d | 2017-05-13 09:00 | 2017-05-13 09:00 |  | 67d | start no earlier than 2017-05-13 09:00 |  |  |  |
| 249 | 3.3 | Revisión 3 | milestone | 0d | 2017-05-20 09:00 | 2017-05-20 09:00 |  | 62d | start no earlier than 2017-05-20 09:00 |  |  |  |
| 250 | 3.4 | Revisión 4 | milestone | 0d | 2017-05-27 09:00 | 2017-05-27 09:00 |  | 57d | start no earlier than 2017-05-27 09:00 |  |  |  |
| 251 | 3.5 | Revisión 5 | milestone | 0d | 2017-06-03 09:00 | 2017-06-03 09:00 |  | 52d | start no earlier than 2017-06-03 09:00 |  |  |  |
| 252 | 3.6 | Revisión 6 | milestone | 0d | 2017-06-10 09:00 | 2017-06-10 09:00 |  | 47d | start no earlier than 2017-06-10 09:00 |  |  |  |
| 253 | 3.7 | Revisión 7 | milestone | 0d | 2017-06-17 09:00 | 2017-06-17 09:00 |  | 42d | start no earlier than 2017-06-17 09:00 |  |  |  |
| 254 | 3.8 | Revisión 8 | milestone | 0d | 2017-06-24 09:00 | 2017-06-24 09:00 |  | 37d | start no earlier than 2017-06-24 09:00 |  |  |  |
| 255 | 3.9 | Revisión 9 | milestone | 0d | 2017-07-01 09:00 | 2017-07-01 09:00 |  | 32d | start no earlier than 2017-07-01 09:00 |  |  |  |
